# ECE411_T10_Project_Schedule_v1

Schedule from MS Project, 2014-10-01 to 2014-12-12.

## Calendars

- Standard: Mon-Fri 08:00-12:00, 13:00-17:00; Sat-Sun off.

## Resources

| Resource |
| --- |
| Carmen |
| Deborah |
| Jeremiah |
| Nick |
| nslj |
| jerscott |
| ccarmen |
| ddenhart |
| 2 days |

## Schedule

| ID | WBS | Task | Type | Duration | Start | Finish | Predecessors | Total slack | Free slack | Constraint | Resources | Work |
| --- | --- | --- | --- | --- | --- | --- | --- | --- | --- | --- | --- | --- |
| 1 | 1 | **Get Started and Select Project** |  | 8d | 2014-10-01 | 2014-10-13 |  | 33d |  |  |  | 276h |
| 2 | 1.1 | Project Begins | milestone | 0d | 2014-10-01 | 2014-10-01 |  | 33d | 0d |  |  |  |
| 3 | 1.2 | 1.1 Form team |  | 1d | 2014-10-01 | 2014-10-01 | 2 | 33d | 0d |  | Carmen; Deborah; Jeremiah; Nick | 32h |
| 4 | 1.3 | 1.2 Create team Github repository and Wiki |  | 1d | 2014-10-02 | 2014-10-02 | 3 | 50d |  |  | Deborah; Nick | 12h |
| 5 | 1.4 | 1.3 Explore diverse project ideas |  | 3d | 2014-10-01 | 2014-10-03 | 2 | 49d |  |  | Carmen; Deborah; Jeremiah; Nick | 96h |
| 6 | 1.5 | 1.4 Write preliminary project proposals (2 proposals/team member) |  | 2d | 2014-10-02 | 2014-10-03 | 3 | 33d | 0d |  | Carmen; Deborah; Jeremiah; Nick | 64h |
| 7 | 1.6 | 1.5 Make decision matrix template |  | 1d | 2014-10-02 | 2014-10-02 | 3 | 50d |  |  | Carmen | 8h |
| 8 | 1.7 | 1.6 Review all preliminary project proposals |  | 1d | 2014-10-06 | 2014-10-06 | 6 | 33d | 0d |  | Carmen; Deborah; Jeremiah; Nick | 32h |
| 9 | 1.8 | 1.7 Enter proposals scores / Select Project |  | 1d | 2014-10-07 | 2014-10-07 | 8 | 33d | 0d |  | Carmen; Deborah; Jeremiah; Nick | 32h |
| 10 | 1.9 | Team Formed and Project Selected | milestone | 0d | 2014-10-08 | 2014-10-08 |  | 47d |  | start no earlier than 2014-10-08 |  |  |
| 11 | 1.10 | Submit Decision Matrix to Instructor | milestone | 0d | 2014-10-13 | 2014-10-13 |  | 44d |  | start no earlier than 2014-10-13 |  |  |
| 12 | 2 | **Create Product Design Specifications** |  | 13d | 2014-10-08 | 2014-10-27 |  | 33d |  |  |  | 146h |
| 13 | 2.1 | 2.1 Research microcontroller interfaces |  | 1d | 2014-10-08 | 2014-10-08 | 9 | 33d | 1d |  | Carmen; Deborah; Jeremiah; Nick | 32h |
| 14 | 2.2 | 2.2 Research sensor options |  | 1d | 2014-10-09 | 2014-10-09 | 9 | 32d | 0d |  | Deborah | 8h |
| 15 | 2.3 | 2.3 Research actuators (LEDs) options |  | 1d | 2014-10-09 | 2014-10-09 | 9 | 32d | 0d |  | Carmen | 8h |
| 16 | 2.4 | 2.4 Research power options |  | 1d | 2014-10-09 | 2014-10-09 | 9 | 32d | 0d |  | Jeremiah | 8h |
| 17 | 2.5 | 2.5 Research options for audio circuit |  | 1d | 2014-10-09 | 2014-10-09 | 9 | 32d | 0d |  | Nick | 8h |
| 18 | 2.6 | 2.6 Select system interfaces and make block diagram |  | 1d | 2014-10-10 | 2014-10-10 | 13, 14, 15, 16, 17 | 32d | 0d |  | Carmen; Deborah; Jeremiah; Nick | 26h |
| 19 | 2.7 | 2.7 Write Product Design Specification document |  | 3d | 2014-10-17 | 2014-10-21 | 18 | 34d | 0d |  | Jeremiah | 24h |
| 20 | 2.8 | 2.8 Review Product Design Specification document |  | 1d | 2014-10-21 | 2014-10-22 | 19 | 34d | 0d |  | Carmen; Deborah; Jeremiah; Nick | 16h |
| 21 | 2.9 | 2.9 Revise Product Design Specification document |  | 2d | 2014-10-23 | 2014-10-24 | 20 | 34d |  |  | Jeremiah | 16h |
| 22 | 2.10 | Submit PDS document to instructor | milestone | 0d | 2014-10-27 | 2014-10-27 |  | 34d |  | start no earlier than 2014-10-27 |  |  |
| 23 | 3 | **Create Schematic** |  | 13d | 2014-10-13 | 2014-10-29 |  | 31d |  |  |  | 216h |
| 24 | 3.1 | 3.1 Select main components |  | 1d | 2014-10-13 | 2014-10-13 | 18 | 32d | 0d |  | Carmen; Deborah; Jeremiah; Nick | 32h |
| 25 | 3.2 | 3.2 Read MCU, sensor, LED controller and LED datasheets |  | 3d | 2014-10-14 | 2014-10-16 | 24 | 32d | 0d |  | Carmen; Deborah; Jeremiah; Nick | 96h |
| 26 | 3.3 | 3.3 Make preliminary schematic |  | 5d | 2014-10-17 | 2014-10-23 | 24, 25 | 32d | 0d |  | Nick | 40h |
| 27 | 3.4 | 3.4 Review schematic |  | 1d | 2014-10-23 | 2014-10-24 | 26 | 32d | 0d |  | Carmen; Deborah; Jeremiah; Nick | 24h |
| 28 | 3.5 | 3.5 Revise schematic (1) |  | 2d | 2014-10-27 | 2014-10-28 | 27 | 32d |  |  | Nick | 16h |
| 29 | 3.6 | Submit preliminary schematic to instructor (no ERC errors) | milestone | 0d | 2014-10-29 | 2014-10-29 |  | 27d | 0d | start no earlier than 2014-10-29 |  |  |
| 30 | 3.7 | 3.6 Revise schematic (2) |  | 1d | 2014-10-29 | 2014-10-29 | 29 | 27d | 0d |  | Nick | 8h |

| ID | WBS | Task | Type | Duration | Start | Finish | Predecessors | Total slack | Free slack | Constraint | Resources | Work |
| --- | --- | --- | --- | --- | --- | --- | --- | --- | --- | --- | --- | --- |
| 31 | 4 | **Create Board Layout** |  | 7d | 2014-10-30 | 2014-11-10 |  | 7d |  |  |  | 104h |
| 32 | 4.1 | 4.1 Make preliminary layout |  | 3d | 2014-10-30 | 2014-11-03 | 30 | 27d | 0d |  | Nick | 24h |
| 33 | 4.2 | 4.2 Review and revise layout (1) |  | 1d | 2014-11-04 | 2014-11-04 | 32 | 27d |  |  | Carmen; Deborah; Jeremiah; Nick | 32h |
| 34 | 4.3 | Submit preliminary layout (no DRC errors) | milestone | 0d | 2014-11-05 | 2014-11-05 |  | 25d | 0d | start no earlier than 2014-11-05 |  |  |
| 35 | 4.4 | 4.3 Revise layout (2) |  | 1d | 2014-11-05 | 2014-11-05 | 34 | 25d | 0d |  | Nick | 8h |
| 36 | 4.5 | 4.4 Find BOM parts on Digikey and order components |  | 1d | 2014-11-06 | 2014-11-06 | 35 | 25d |  |  | Carmen | 8h |
| 37 | 4.6 | Receive Digi-key components | milestone | 0d | 2014-11-07 | 2014-11-07 |  | 24d | 0d | start no earlier than 2014-11-07 |  |  |
| 38 | 4.7 | 4.5 Print layout and overimpose real components / Review layout before submitting board to fab |  | 1d | 2014-11-07 | 2014-11-07 | 37 | 24d |  |  | Carmen; Deborah; Jeremiah; Nick | 32h |
| 39 | 4.8 | Upload board design to OSHPark | milestone | 0d | 2014-11-10 | 2014-11-10 |  | 0d |  | start no earlier than 2014-11-10 |  |  |
| 40 | 5 | **Create Sensors and Actuators Drivers** |  | 15d | 2014-11-10 | 2014-11-28 |  | 0d |  |  |  | 216h |
| 41 | 5.1 | 5.1 Research AVRlibc and build development environment on breadboard |  | 1d | 2014-11-10 | 2014-11-10 | 39 | 0d |  |  | Carmen; Deborah | 16h |
| 42 | 5.2 | 5.2 Research LED driver protocol |  | 1d | 2014-11-12 | 2014-11-12 | 39 | 1d |  |  | Carmen | 8h |
| 43 | 5.3 | 5.3 Research I2C protocol |  | 1d | 2014-11-11 | 2014-11-11 | 39 | 13d | 0d |  | Deborah | 8h |
| 44 | 5.4 | 5.4 Write simple LED program and download to MCU |  | 1d | 2014-11-11 | 2014-11-11 | 41 | 0d |  |  | Carmen | 8h |
| 45 | 5.5 | 5.5 Code MCU initialization |  | 1d | 2014-11-13 | 2014-11-13 | 44 | 0d |  |  | Carmen | 8h |
| 46 | 5.6 | 5.6 Code LED driver protocol |  | 5d | 2014-11-14 | 2014-11-20 | 45, 42 | 0d |  |  | Carmen | 40h |
| 47 | 5.7 | 5.7 Code sensor I2C driver |  | 5d | 2014-11-12 | 2014-11-18 | 43, 41 | 13d | 2d |  | Deborah | 40h |
| 48 | 5.8 | 5.8 Code MCU data processing |  | 1d | 2014-11-21 | 2014-11-21 | 47, 46 | 11d | 0d |  | Carmen; Deborah | 16h |
| 49 | 5.9 | 5.9 Code LED test sequence |  | 1d | 2014-11-24 | 2014-11-24 | 46 | 0d |  |  | Carmen | 8h |
| 50 | 5.10 | 5.10 Write test plan for LED driver code and data processing code |  | 1d | 2014-11-25 | 2014-11-25 | 49 | 0d |  |  | Carmen | 8h |
| 51 | 5.11 | 5.11 Write test plan for sensor driver code and data processing code |  | 1d | 2014-11-24 | 2014-11-24 | 48 | 11d | 0d |  | Deborah | 8h |
| 52 | 5.12 | 5.12 Test and debug LED driver code and data processing code |  | 2d | 2014-11-26 | 2014-11-27 | 50 | 0d |  |  | Carmen | 16h |
| 53 | 5.13 | 5.13 Test and debug sensor driver code and data processing code |  | 2d | 2014-11-25 | 2014-11-26 | 51 | 11d |  |  | Deborah | 16h |
| 54 | 5.14 | 5.14 Combine MCU init, sensor, LED and data processing code |  | 1d | 2014-11-28 | 2014-11-28 | 52 | 0d |  |  | Carmen; Deborah | 16h |

| ID | WBS | Task | Type | Duration | Start | Finish | Predecessors | Total slack | Free slack | Constraint | Resources | Work |
| --- | --- | --- | --- | --- | --- | --- | --- | --- | --- | --- | --- | --- |
| 55 | 6 | **Assemble and Test board** |  | 5d | 2014-11-17 | 2014-11-21 |  | 11d |  |  |  | 80h |
| 56 | 6.1 | Receive boards from OSHPark | milestone | 0d | 2014-11-17 | 2014-11-17 |  | 11d | 0d | start no earlier than 2014-11-17 |  |  |
| 57 | 6.2 | 6.1 Assemble all components for each subsytem (soldering) |  | 3d | 2014-11-17 | 2014-11-19 | 56 | 14d | 0d |  | Jeremiah; Nick | 48h |
| 58 | 6.3 | 6.2 Power subsystem: Test VCC at required points |  | 1d | 2014-11-20 | 2014-11-20 | 57 | 14d | 0d |  | Nick; Jeremiah | 16h |
| 59 | 6.4 | 6.3 Connectors/Headers/Switches: ensure test points are active |  | 1d | 2014-11-21 | 2014-11-21 | 58 | 14d |  |  | Jeremiah | 8h |
| 60 | 6.5 | 6.4 Crystal Xtal signal is verified at 8.192MHz |  | 1d | 2014-11-21 | 2014-11-21 | 58 | 14d |  |  | Nick | 8h |
| 61 | 7 | **Develop Firmware for Audio Circuit** |  | 8d | 2014-11-17 | 2014-11-26 |  | 11d |  |  |  | 88h |
| 62 | 7.1 | 7.1 Code "Hello world" program for audio test |  | 5d | 2014-11-17 | 2014-11-21 | 56 | 11d | 0d |  | Nick | 40h |
| 63 | 7.2 | 7.2 PWM audio: code function for each supported color |  | 1d | 2014-11-24 | 2014-11-24 | 62 | 11d | 0d |  | Nick | 8h |
| 64 | 7.3 | 7.3 PWM audio: code mainline for color sensor readings |  | 1d | 2014-11-25 | 2014-11-25 | 63 | 11d | 0d |  | Nick | 8h |
| 65 | 7.4 | 7.4 Peer review PWM code |  | 1d | 2014-11-26 | 2014-11-26 | 64 | 11d |  |  | Carmen; Deborah; Jeremiah | 32h |
| 66 | 8 | **Perform System Integration, Test and Verification** |  | 5d | 2014-12-01 | 2014-12-05 |  | 0d |  |  |  | 160h |
| 67 | 8.1 | 8.1 Design test cases for all subsystems |  | 2d | 2014-12-01 | 2014-12-02 | 54 | 0d |  |  | Carmen; Deborah; Nick; Jeremiah | 64h |
| 68 | 8.2 | 8.2 Implement test cases for all subsystems |  | 2d | 2014-12-03 | 2014-12-04 | 67 | 0d |  |  | Carmen; Deborah; Jeremiah; Nick | 64h |
| 69 | 8.3 | 8.3 Buy / Build mirror frame and assemble product |  | 1d | 2014-12-05 | 2014-12-05 | 68 | 0d |  |  | Carmen; Deborah; Jeremiah; Nick | 32h |
| 70 | 9 | **Update Project Documentation** |  | 4d | 2014-12-08 | 2014-12-12 |  | 0d |  |  |  | 48h |
| 71 | 9.1 | 9.1 Draw L-0 block diagram of full system and subcomponents and L1 block diagram of full system |  | 1d | 2014-12-08 | 2014-12-08 | 69 | 0d |  |  | Nick | 8h |
| 72 | 9.2 | 9.2 Redefine project requirements, update PDS |  | 1d | 2014-12-09 | 2014-12-09 | 71 | 0d |  |  | Jeremiah | 8h |
| 73 | 9.3 | 9.3 Create project report |  | 2d | 2014-12-10 | 2014-12-11 | 72 | 0d |  |  | Deborah | 16h |
| 74 | 9.4 | 9.4 Create Project Presentation |  | 2d | 2014-12-10 | 2014-12-11 | 72 | 0d |  |  | Carmen | 16h |
| 75 | 9.5 | Project Demo | milestone | 0d | 2014-12-12 | 2014-12-12 |  | 0d |  | start no earlier than 2014-12-12 |  |  |
